# empatia_gamt_consultores_cronograma

Schedule from MS Project, 2012-05-14 to 2012-08-07, A marks actual dates.

## Calendars

- Estándar: Mon-Fri 09:00-13:00, 15:00-19:00; Sat-Sun off.

## Resources

| Resource |
| --- |
| Jared Bustamante |
| José Juan Duarte |
| José Rodolfo Sánchez |

## Schedule

| ID | WBS | Task | Type | Duration | Start | Finish | Predecessors | Complete | Remaining | Total slack | Constraint | Resources | Work | Actual work |
| --- | --- | --- | --- | --- | --- | --- | --- | --- | --- | --- | --- | --- | --- | --- |
| 1 | 1 | **Empatía Gantt Consultores** |  | 62d | 2012-05-14 A | 2012-08-07 |  | 4% | 59.24d | 0d |  |  | 760h | 48h |
| 2 | 1.1 | **INICIACIÓN** |  | 4d | 2012-05-14 A | 2012-05-18 |  |  | 4d | 0d |  |  |  |  |
| 3 | 1.1.1 | proyecto chárter | milestone, manual | 0d | 2012-05-14 | 2012-05-14 |  |  |  |  | start no earlier than 2012-05-14 | José Juan Duarte |  |  |
| 4 | 1.1.2 | registro de stakeholders | milestone, manual | 0d | 2012-05-15 | 2012-05-15 |  |  |  |  | start no earlier than 2012-05-15 | José Juan Duarte |  |  |
| 5 | 1.1.3 | descripción de la problemática | milestone, manual | 0d | 2012-05-15 A | 2012-05-15 A | 3 | 100% |  |  | finish no earlier than 2012-05-24 | Jared Bustamante; José Rodolfo Sánchez |  |  |
| 6 | 1.1.4 | propósito del proyecto | milestone, manual | 0d | 2012-05-16 A | 2012-05-16 A | 3, 5 | 100% |  |  | finish no earlier than 2012-05-24 | Jared Bustamante; José Rodolfo Sánchez |  |  |
| 7 | 1.1.5 | alcance del proyecto | milestone, manual | 0d | 2012-05-17 A | 2012-05-17 A | 6 | 100% |  |  | finish no earlier than 2012-05-24 | Jared Bustamante |  |  |
| 8 | 1.1.6 | viabilidad | milestone, manual | 0d | 2012-05-18 | 2012-05-18 | 3, 4, 5, 6, 7 |  |  |  | start no earlier than 2012-05-18 | José Juan Duarte |  |  |
| 9 | 1.2 | **PLANIFICIACIÓN** |  | 6d | 2012-05-15 A | 2012-05-23 |  |  | 6d | 0d |  |  | 16h |  |
| 10 | 1.2.1 | Estructura de descomposición de trabajo | milestone, manual | 0d | 2012-05-15 A | 2012-05-15 A | 5, 7 | 100% |  |  |  | Jared Bustamante; José Rodolfo Sánchez |  |  |
| 11 | 1.2.2 | plan de gestión de proyecto | milestone, manual | 0d | 2012-05-17 | 2012-05-17 | 3, 4, 7 |  |  |  | start no earlier than 2012-05-17 | José Rodolfo Sánchez |  |  |
| 12 | 1.2.3 | cronograma de proyecto | milestone, manual | 0d | 2012-05-18 A | 2012-05-18 | 10, 11 | 99% | 0d |  |  | Jared Bustamante |  |  |
| 13 | 1.2.4 | descripción de roles | milestone, manual | 0d | 2012-05-15 | 2012-05-15 | 10 |  |  |  |  | José Rodolfo Sánchez |  |  |
| 14 | 1.2.5 | RAM | milestone, manual | 0d | 2012-05-16 | 2012-05-16 | 10, 13 |  |  |  |  | José Rodolfo Sánchez |  |  |
| 15 | 1.2.6 | evaluación cualitativa y cuantitativa de riesgos | milestone, manual | 0d | 2012-05-22 | 2012-05-22 |  |  |  |  |  | José Juan Duarte; José Rodolfo Sánchez; Jared Bustamante |  |  |
| 16 | 1.2.7 | plan de respuesta a riesgos | milestone, manual | 0d | 2012-05-23 | 2012-05-23 | 15 |  |  |  |  | Jared Bustamante; José Juan Duarte; José Rodolfo Sánchez |  |  |
| 17 | 1.2.8 | plan de gestión de adquisiciones | milestone, manual | 0d | 2012-05-16 | 2012-05-16 | 10 |  |  |  |  | José Juan Duarte |  |  |
| 18 | 1.2.9 | plan de comunicaciones | manual | 1d | 2012-05-15 | 2012-05-15 | 4 |  |  |  |  | José Juan Duarte | 8h |  |
| 19 | 1.2.10 | ruta critica | manual | 1d | 2012-05-18 | 2012-05-18 | 12 |  |  |  |  | José Rodolfo Sánchez | 8h |  |
| 20 | 1.3 | **EJECUCIÓN** |  | 8d | 2012-05-23 A | 2012-06-01 |  | 50% | 4d | 0d |  |  | 40h | 24h |
| 21 | 1.3.1 | informe de performance | manual | 2d | 2012-05-23 | 2012-05-24 |  |  |  |  |  | José Rodolfo Sánchez | 16h |  |
| 22 | 1.3.2 | documento de requerimientos |  | 2d | 2012-05-25 A | 2012-06-01 A | 27 | 100% |  |  |  | Jared Bustamante; José Rodolfo Sánchez | 24h | 24h |
| 23 | 1.4 | **CONTROL** |  | 3d | 2012-06-01 | 2012-06-05 |  |  |  | 0d |  |  | 56h |  |
| 24 | 1.4.1 | diagrama de Gantt | manual | 2d | 2012-06-01 | 2012-06-04 | 10 |  |  |  |  | Jared Bustamante | 16h |  |
| 25 | 1.4.2 | informe de monitoreo de riesgos | manual | 2d | 2012-06-04 | 2012-06-05 |  |  |  |  |  | Jared Bustamante; José Juan Duarte; José Rodolfo Sánchez | 40h |  |

| ID | WBS | Task | Type | Duration | Start | Finish | Predecessors | Complete | Remaining | Total slack | Constraint | Resources | Work | Actual work |
| --- | --- | --- | --- | --- | --- | --- | --- | --- | --- | --- | --- | --- | --- | --- |
| 26 | 1.5 | **ANÁLISIS Y DISEÑO** |  | 9d | 2012-06-06 A | 2012-06-19 |  | 17% | 7.5d | 0d |  |  | 104h | 24h |
| 27 | 1.5.1 | **gestión de requerimientos** |  | 4d | 2012-06-06 A | 2012-06-11 |  | 50% | 2d | 0d |  |  | 40h | 24h |
| 28 | 1.5.1.1 | entrevistas con el cliente | manual | 2d | 2012-06-06 A | 2012-06-07 A |  | 100% |  |  |  | Jared Bustamante; José Rodolfo Sánchez | 24h | 24h |
| 29 | 1.5.1.2 | listado de requerimientos | manual | 2d | 2012-06-08 | 2012-06-11 | 28 |  |  |  |  | Jared Bustamante; José Rodolfo Sánchez | 16h |  |
| 30 | 1.5.2 | **diseño orientado a objetos** |  | 5d | 2012-06-12 | 2012-06-18 |  |  |  | 0d |  |  | 32h |  |
| 31 | 1.5.2.1 | diagrama de secuencia | manual | 1d | 2012-06-18 | 2012-06-18 | 29, 33, 32 |  |  |  |  | José Juan Duarte | 8h |  |
| 32 | 1.5.2.2 | diagrama de clases | manual | 2d | 2012-06-12 | 2012-06-13 | 29, 33 |  |  |  |  | José Rodolfo Sánchez | 16h |  |
| 33 | 1.5.2.3 | diagrama de caso de usos | manual | 1d | 2012-06-12 | 2012-06-12 | 29 |  |  |  |  | Jared Bustamante | 8h |  |
| 34 | 1.5.3 | **diseño de datos** |  | 6d | 2012-06-11 | 2012-06-19 |  |  |  | 0d |  |  | 32h |  |
| 35 | 1.5.3.1 | diagrama entidad-relación | manual | 3d | 2012-06-11 | 2012-06-14 | 29 |  |  |  |  | Jared Bustamante; José Rodolfo Sánchez | 24h |  |
| 36 | 1.5.3.2 | modelo relacional | manual | 1d | 2012-06-18 | 2012-06-18 | 35 |  |  |  |  | José Rodolfo Sánchez | 8h |  |
| 37 | 1.5.3.3 | script SQL | milestone, manual | 0d | 2012-06-19 | 2012-06-19 | 36 |  |  |  |  | Jared Bustamante |  |  |
| 38 | 1.6 | **DESARROLLO** |  | 36d | 2012-06-19 | 2012-08-07 | 30, 34 |  |  | 0d |  |  | 448h |  |
| 39 | 1.6.1 | **desarrollo de clases** |  | 13d | 2012-06-19 | 2012-07-05 |  |  |  | 23d |  |  | 208h |  |
| 40 | 1.6.1.1 | clase de conexión |  | 2d | 2012-06-22 | 2012-07-05 |  |  |  | 18d | start no earlier than 2012-06-22 | Jared Bustamante; José Rodolfo Sánchez | 16h |  |
| 41 | 1.6.1.2 | clase_participante |  | 3d | 2012-06-19 | 2012-06-21 |  |  |  | 28d | start no earlier than 2012-06-18 | Jared Bustamante | 24h |  |
| 42 | 1.6.1.3 | clase_generaRecomendación |  | 3d | 2012-06-19 | 2012-06-21 |  |  |  | 28d | start no earlier than 2012-06-19 | José Rodolfo Sánchez | 24h |  |
| 43 | 1.6.1.4 | clase_servicios |  | 3d | 2012-06-22 | 2012-06-26 |  |  |  | 25d | start no earlier than 2012-06-22 | José Rodolfo Sánchez | 24h |  |
| 44 | 1.6.1.5 | clase _asesores |  | 3d | 2012-06-27 | 2012-06-29 |  |  |  | 22d | start no earlier than 2012-06-27 | José Rodolfo Sánchez | 24h |  |
| 45 | 1.6.1.6 | clase_alumnos |  | 3d | 2012-07-02 | 2012-07-04 |  |  |  | 19d | start no earlier than 2012-07-02 | José Rodolfo Sánchez | 24h |  |
| 46 | 1.6.1.7 | clase_factración |  | 3d | 2012-06-25 | 2012-06-27 |  |  |  | 24d | start no earlier than 2012-06-25 | Jared Bustamante | 24h |  |
| 47 | 1.6.1.8 | clase_control_nutrimental |  | 3d | 2012-06-28 | 2012-07-02 |  |  |  | 21d | start no earlier than 2012-06-28 | Jared Bustamante | 24h |  |
| 48 | 1.6.1.9 | clase_fechas_importantes |  | 3d | 2012-07-03 | 2012-07-05 |  |  |  | 18d | start no earlier than 2012-07-03 | Jared Bustamante | 24h |  |
| 49 | 1.6.2 | **desarrollo GUI** |  | 30d | 2012-06-27 | 2012-08-07 |  |  |  | 0d |  |  | 240h |  |
| 50 | 1.6.2.1 | pantalla principal |  | 3d | 2012-06-27 | 2012-06-29 |  |  |  | 0d | start no earlier than 2012-06-27 | José Juan Duarte | 24h |  |
| 51 | 1.6.2.2 | pantalla principal del administrador |  | 3d | 2012-07-02 | 2012-07-04 | 50 |  |  | 0d |  | José Juan Duarte | 24h |  |
| 52 | 1.6.2.3 | datos de participante |  | 3d | 2012-07-05 | 2012-07-09 | 51 |  |  | 0d |  | José Juan Duarte | 24h |  |
| 53 | 1.6.2.4 | generador de cartas de recomendación |  | 3d | 2012-07-10 | 2012-07-12 | 52 |  |  | 0d |  | José Juan Duarte | 24h |  |
| 54 | 1.6.2.5 | catalogo de servicios |  | 3d | 2012-07-13 | 2012-07-17 | 53 |  |  | 0d |  | José Juan Duarte | 24h |  |
| 55 | 1.6.2.6 | catálogo de asesores |  | 3d | 2012-07-18 | 2012-07-20 | 54 |  |  | 0d | start no earlier than 2012-07-16 | José Juan Duarte | 24h |  |
| 56 | 1.6.2.7 | catalogo de alumnos |  | 3d | 2012-07-23 | 2012-07-25 | 55 |  |  | 0d |  | José Juan Duarte | 24h |  |
| 57 | 1.6.2.8 | pantalla de información de facturación |  | 3d | 2012-07-26 | 2012-07-30 | 56 |  |  | 0d |  | José Juan Duarte | 24h |  |
| 58 | 1.6.2.9 | control nutrimental del participante |  | 3d | 2012-07-31 | 2012-08-02 | 57 |  |  | 0d |  | José Juan Duarte | 24h |  |
| 59 | 1.6.2.10 | listado de fechas importantes |  | 3d | 2012-08-03 | 2012-08-07 | 58 |  |  | 0d |  | José Juan Duarte | 24h |  |

| ID | WBS | Task | Duration | Start | Finish | Total slack | Constraint | Resources | Work |
| --- | --- | --- | --- | --- | --- | --- | --- | --- | --- |
| 60 | 1.7 | **PRUEBAS** | 3d | 2012-05-29 | 2012-05-31 | 48d |  |  | 40h |
| 61 | 1.7.1 | pruebas de validación | 3d | 2012-05-29 | 2012-05-31 | 43d | start no earlier than 2012-05-29 | José Rodolfo Sánchez | 24h |
| 62 | 1.7.2 | pruebas de requerimientos | 2d | 2012-05-30 | 2012-05-31 | 43d | start no earlier than 2012-05-30 | Jared Bustamante | 16h |
| 63 | 1.8 | **IMPLEMENTACIÓN** | 32d | 2012-05-30 | 2012-07-12 | 18d |  |  | 56h |
| 64 | 1.8.1 | plan de implementación | 4d | 2012-07-09 | 2012-07-12 | 18d | start no earlier than 2012-07-09 | José Rodolfo Sánchez | 32h |
| 65 | 1.8.2 | manual de usuario | 3d | 2012-05-30 | 2012-07-09 | 21d | start no earlier than 2012-05-30 | Jared Bustamante; José Juan Duarte; José Rodolfo Sánchez | 24h |
